# Northwind BI Plan from Kimball by workflows

Schedule from MS Project, 2024-04-01 to 2024-09-24, costs in ₽.

## Calendars

- Standard: Mon-Fri 08:00-12:00, 13:00-17:00; Sat-Sun off.

## Resources

| Resource | Group | Rate | Notes |
| --- | --- | --- | --- |
| Project manager | PMO | 4300 | Coordinates project tasks and schedules and ensures that the project is completed on time and within budget |
| BI solution architect | BI team | 4900 | Has overall responsibility for the technical design of the data warehousing solution |
| System analyst | BI team | 3200 | Examines and understands the data-related requirements, objectives, and constraints of the organization to design and develop an effective BI system |
| MSSQL developer | BI team | 4400 | Builds database and ETL workflows to meet business requirements in analysis and reporting |
| Report developer | BI team | 4400 | Creates the reporting elements of the BI solution |
| DevOps specialist | BI team | 4400 | Implements the server and network infrastructure for the data warehousing solution, deploys solution in production environment, setting up CI/CD pipelines |
| Database administrator |  |  | Maintains data warehouse, provides access for users |
| Business users |  |  | Provide requirements and help to prioritize the business questions that the data warehousing solution will answer. Often, the team includes a business analyst as a full-time member to help interpret the business questions and ensure that the solution desi |
| Testers | BI team | 3200 | Verify the business and operational functionality of the solution as it is developed |

## Schedule

| ID | WBS | Task | Type | Duration | Start | Finish | Predecessors | Baseline start | Baseline finish | Baseline duration | Total slack | Free slack | Resources | Work | Cost |
| --- | --- | --- | --- | --- | --- | --- | --- | --- | --- | --- | --- | --- | --- | --- | --- |
| 1 | 1 | **Planning, analyze, design** |  | 72d? | 2024-04-01 | 2024-07-09 |  | 2024-05-09 | 2024-07-05 | 42d? | 0d |  |  | 975.2h | 3,785,280 |
| 2 | 1.1 | Project planning |  | 1d? | 2024-04-01 | 2024-04-01 |  | 2024-05-09 | 2024-05-15 | 5d? | 0d |  | BI solution architect; Project manager | 16h | 73,600 |
| 3 | 1.2 | Business requirements definition |  | 22d? | 2024-04-02 | 2024-05-01 | 2 | 2024-05-16 | 2024-06-14 | 22d? | 0d |  | System analyst; BI solution architect [20%] | 211.2h | 735,680 |
| 4 | 1.3 | Technical architecture design |  | 3d? | 2024-05-02 | 2024-05-06 | 3 | 2024-06-17 | 2024-06-17 | 1d? | 81d | 0d | System analyst [50%]; BI solution architect | 36h | 156,000 |
| 5 | 1.4 | Planning software |  | 1d? | 2024-05-07 | 2024-05-07 | 4 | 2024-06-18 | 2024-06-18 | 1d? | 81d | 0d | DevOps specialist; BI solution architect | 16h | 74,400 |
| 6 | 1.5 | Dimensional modelling |  | 33d? | 2024-05-07 | 2024-06-20 | 3 | 2024-06-17 | 2024-06-18 | 2d? | 0d |  | System analyst; MSSQL developer | 528h | 2,006,400 |
| 7 | 1.6 | BI application design |  | 5d? | 2024-05-02 | 2024-05-08 | 3 | 2024-06-17 | 2024-06-21 | 5d? | 44d | 0d | Report developer | 40h | 176,000 |
| 8 | 1.7 | Physical design |  | 3d? | 2024-06-21 | 2024-06-25 | 6 | 2024-06-19 | 2024-06-21 | 3d? | 0d |  | MSSQL developer; DevOps specialist | 48h | 211,200 |
| 9 | 1.8 | ETL design |  | 10d? | 2024-06-26 | 2024-07-09 | 8 | 2024-06-24 | 2024-07-05 | 10d? | 0d |  | MSSQL developer | 80h | 352,000 |
| 10 | 2 | **Development** |  | 85d? | 2024-05-08 | 2024-09-03 |  | 2024-06-19 | 2024-08-30 | 53d? | 0d |  |  | 672h | 2,956,800 |
| 11 | 2.1 | Resources & software installation |  | 4d? | 2024-05-08 | 2024-05-13 | 5 | 2024-06-19 | 2024-06-24 | 4d? | 81d |  | DevOps specialist | 32h | 140,800 |
| 12 | 2.2 | ETL development |  | 40d? | 2024-07-10 | 2024-09-03 | 9 | 2024-07-08 | 2024-08-30 | 40d? | 0d |  | MSSQL developer | 320h | 1,408,000 |
| 13 | 2.3 | BI application development |  | 40d? | 2024-05-09 | 2024-07-03 | 7 | 2024-06-24 | 2024-08-16 | 40d? | 44d |  | Report developer | 320h | 1,408,000 |
| 14 | 3 | Deployment |  | 5d? | 2024-09-04 | 2024-09-10 | 13, 11, 12 | 2024-09-02 | 2024-09-06 | 5d? | 0d |  | BI solution architect; DevOps specialist | 80h | 372,000 |
| 15 | 4 | Testing |  | 10d? | 2024-09-11 | 2024-09-24 | 14 | 2024-09-09 | 2024-09-20 | 10d | 0d |  | Testers | 80h | 256,000 |
| 16 | 5 | RELEASE 1 | milestone | 0d? | 2024-09-24 | 2024-09-24 | 15 | 2024-09-20 | 2024-09-20 | 0d | 0d |  | BI solution architect |  |  |
